# BiMo

Schedule from MS Project, 2017-02-01 to 2017-10-31, 3 hours a day, costs in $, A marks actual dates.

## Calendars

- Calendario Proyecto: Mon-Fri 09:00-10:00, 10:30-12:00; Sat-Sun off. Exceptions (off unless hours are given): 2017-03-20 (Festivo), 2017-04-10 to 2017-04-14 (Semana Santa), 2017-05-01 (Dia del Trabajo), 2017-05-29 (Festivo), 2017-06-19 (Festivo), 2017-06-26 (Festivo), 2017-07-03 (Festivo), 2017-07-20 (Dia de la Independencia), 2017-08-07 (Batalla de Boyaca), 2017-08-21 (Festivo), 2017-10-16 (Dia de la raza).

## Resources

| Resource | Rate | Cost per use |
| --- | --- | --- |
| Michael Rojas Ibañez | 3075 | 7000 |
| Juan Paez Granados | 3075 | 7000 |
| Andres Navarro Zambrano | 3075 | 7000 |
| George Galindo Cardona | 3075 | 7000 |
| Diana Isabel Peña | 3075 | 7000 |

## Schedule

| ID | WBS | Task | Duration | Start | Finish | Predecessors | Complete | Remaining | Total slack | Free slack | Constraint | Resources | Work | Actual work | Cost | Actual cost |
| --- | --- | --- | --- | --- | --- | --- | --- | --- | --- | --- | --- | --- | --- | --- | --- | --- |
| 1 | 1 | **Planificacion** | 9.17d | 2017-02-01 A | 2017-02-15 |  | 79% | 1.89d |  |  |  |  | 63h | 55.5h | 256,725 | 233,662.5 |
| 2 | 1.1 | Conformar un grupo | 1d | 2017-02-01 A | 2017-02-02 A |  | 100% |  |  |  |  | Juan Paez Granados | 3h | 3h | 16,225 | 16,225 |
| 3 | 1.2 | Ideas del Proyecto | 2.5d? | 2017-02-03 A | 2017-02-07 A | 2 | 100% |  |  |  | finish no earlier than 2017-02-07 | Andres Navarro Zambrano; Diana Isabel Peña; George Galindo Cardona; Juan Paez Granados; Michael Rojas Ibañez | 37.5h | 37.5h | 150,312.5 | 150,312.5 |
| 4 | 1.3 | Eleccion de Idea | 2.5d? | 2017-02-08 A | 2017-02-10 | 3 | 60% | 1d? | 1.75d | 0d | finish no earlier than 2017-02-10 | Juan Paez Granados | 7.5h | 4.5h | 30,062.5 | 20,837.5 |
| 5 | 1.4 | Eleccion lugar de implementacion | 2.5d? | 2017-02-13 A | 2017-02-15 | 4 | 70% | 0.75d? | 140.17d |  | finish no earlier than 2017-02-15 | Diana Isabel Peña; George Galindo Cardona | 15h | 10.5h | 60,125 | 46,287.5 |
| 6 | 2 | **Analisis** | 15.83d | 2017-02-16 A | 2017-03-14 | 1 | 92% | 1.25d |  |  |  |  | 82.5h | 77.38h | 323,687.5 | 307,928.12 |
| 7 | 2.1 | Analisis problema de Organizacion | 3.33d? | 2017-02-16 A | 2017-02-21 A | 5 | 100% |  |  |  | start no earlier than 2017-02-16 |  |  |  |  |  |
| 8 | 2.2 | Elicitacion de Requerimientos | 2.5d? | 2017-02-21 A | 2017-02-23 A |  | 100% |  |  |  | finish no earlier than 2017-02-23 | Diana Isabel Peña; George Galindo Cardona; Andres Navarro Zambrano; Michael Rojas Ibañez | 30h | 30h | 120,250 | 120,250 |
| 9 | 2.3 | Recoleccion de Datos | 8.33d? | 2017-02-22 A | 2017-03-07 A | 7 | 100% |  |  |  | finish no earlier than 2017-03-07 | Juan Paez Granados | 25h | 25h | 83,875 | 83,875 |
| 10 | 2.4 | Entrevisata Administrador | 1.67d? | 2017-03-08 A | 2017-03-09 A | 9 | 100% |  |  |  | finish no earlier than 2017-03-09 | Diana Isabel Peña; George Galindo Cardona | 10h | 10h | 44,750 | 44,750 |
| 11 | 2.5 | Entrevista Supervisor | 1.67d? | 2017-03-08 A | 2017-03-09 A | 9 | 100% |  |  |  | finish no earlier than 2017-03-09 | Andres Navarro Zambrano | 5h | 5h | 22,375 | 22,375 |
| 12 | 2.6 | Entrevista Guardas de Seguridad | 1.67d? | 2017-03-08 A | 2017-03-09 | 9 | 50% | 0.83d? | 126.83d |  | finish no earlier than 2017-03-09 | Juan Paez Granados | 5h | 2.5h | 22,375 | 14,687.5 |
| 13 | 2.7 | Encuesta Estudiantes | 2.5d? | 2017-03-10 A | 2017-03-14 | 9 | 65% | 0.88d? | 124.33d |  | finish no earlier than 2017-03-14 | George Galindo Cardona | 7.5h | 4.88h | 30,062.5 | 21,990.62 |
| 14 | 3 | **Diseño** | 53.33d | 2017-03-15 A | 2017-06-23 | 6 | 78% | 11.51d |  |  |  |  | 265h | 203.12h | 926,875 | 736,609.38 |
| 15 | 3.1 | Diseño Tabulacion de resultados entrevistas | 2.5d? | 2017-03-15 A | 2017-03-17 A | 9 | 100% |  |  |  | finish no earlier than 2017-03-17 | Andres Navarro Zambrano | 7.5h | 7.5h | 30,062.5 | 30,062.5 |
| 16 | 3.2 | Diseño Requerimientos F y no F | 3.33d? | 2017-03-21 A | 2017-03-24 A |  | 100% |  |  |  | start no earlier than 2017-03-20 | Michael Rojas Ibañez | 10h | 10h | 37,750 | 37,750 |
| 17 | 3.3 | Diseño Diagramas UML | 4.17d? | 2017-03-27 A | 2017-03-31 A |  | 100% |  |  |  | finish no earlier than 2017-03-31 | Andres Navarro Zambrano; Juan Paez Granados | 25h | 25h | 90,875 | 90,875 |
| 18 | 3.4 | Diseño de Caso de Uso | 4.17d? | 2017-03-27 A | 2017-03-31 A |  | 100% |  |  |  | finish no earlier than 2017-03-31 | Michael Rojas Ibañez | 12.5h | 12.5h | 45,437.5 | 45,437.5 |
| 19 | 3.5 | Diseño Caso de Uso extendido | 4.17d? | 2017-04-03 A | 2017-04-07 A |  | 100% |  |  |  | finish no earlier than 2017-04-07 | Andres Navarro Zambrano; Michael Rojas Ibañez | 25h | 25h | 90,875 | 90,875 |
| 20 | 3.6 | Diseño Prototipo web | 8.33d? | 2017-04-17 A | 2017-04-28 A |  | 100% |  |  |  | finish no earlier than 2017-04-28 | Michael Rojas Ibañez | 25h | 25h | 83,875 | 83,875 |
| 21 | 3.7 | Arquitectura del Hardware | 7.5d? | 2017-05-02 A | 2017-05-12 |  | 50% | 3.75d? | 94.33d |  | finish no earlier than 2017-05-12 | Andres Navarro Zambrano | 22.5h | 11.25h | 76,187.5 | 41,593.75 |
| 22 | 3.8 | Diseño Diagrama de Despliegue | 8.33d? | 2017-05-15 A | 2017-05-26 |  | 70% | 2.5d? | 12d | 7.5d | finish no earlier than 2017-05-26 | Diana Isabel Peña; Juan Paez Granados | 50h | 35h | 167,750 | 121,625 |
| 23 | 3.9 | Diseño Ingreso via WEB | 3.33d? | 2017-05-30 A | 2017-06-02 | 20 | 40% | 2d? | 82.67d |  | finish no earlier than 2017-06-02 | George Galindo Cardona; Michael Rojas Ibañez | 20h | 8h | 75,500 | 38,600 |
| 24 | 3.10 | POO | 7.5d? | 2017-05-30 A | 2017-06-09 |  | 75% | 1.88d? | 78.5d |  | finish no earlier than 2017-06-09 | Juan Paez Granados | 22.5h | 16.88h | 76,187.5 | 58,890.62 |
| 25 | 3.11 | Diseño Diagrama de Clases | 7.5d? | 2017-06-12 A | 2017-06-23 | 22 | 60% | 3d? | 71d |  | finish no earlier than 2017-06-23 | Andres Navarro Zambrano; Michael Rojas Ibañez | 45h | 27h | 152,375 | 97,025 |

| ID | WBS | Task | Duration | Start | Finish | Predecessors | Complete | Remaining | Actual start | Total slack | Constraint | Resources | Work | Actual work | Cost | Actual cost |
| --- | --- | --- | --- | --- | --- | --- | --- | --- | --- | --- | --- | --- | --- | --- | --- | --- |
| 26 | 4 | **Implementacion** | 15.83d | 2017-08-07 | 2017-09-01 |  | 79% | 3.28d | 2017-08-08 |  |  |  | 58.5h | 49.5h | 207,887.5 | 180,212.5 |
| 27 | 4.1 | Construccion de prototipos | 2d | 2017-08-08 A | 2017-08-10 A |  | 100% |  |  |  | start no earlier than 2017-08-08 | Michael Rojas Ibañez | 6h | 6h | 25,450 | 25,450 |
| 28 | 4.2 | Eleccion y correccion del prototipo | 5d | 2017-08-11 A | 2017-08-18 A |  | 100% |  |  |  | finish no earlier than 2017-08-18 | Andres Navarro Zambrano; George Galindo Cardona | 30h | 30h | 106,250 | 106,250 |
| 29 | 4.3 | Creacion de la base de datos | 7.5d | 2017-08-22 A | 2017-09-01 | 28 | 60% | 3d |  | 33.5d | finish no earlier than 2017-09-01 | Michael Rojas Ibañez | 22.5h | 13.5h | 76,187.5 | 48,512.5 |
| 30 | 5 | Pruebas | 21d | 2017-09-25 A | 2017-10-31 |  | 50% | 10.5d |  | 0d | start no earlier than 2017-09-25 | Diana Isabel Peña | 63h | 31.5h | 200,725 | 103,862.5 |
| 31 | 6 | Instalacion-Mantenimiento | 1d? | 2017-10-18 | 2017-10-19 |  |  |  |  | 6.67d | start no earlier than 2017-10-18 |  |  |  |  |  |
